# nibKame

Schedule from GanttProject, 2010-10-11 to 2011-01-17, baseline: 中間報告1.
GuNCT

## Calendars

- Project calendar: Mon-Fri working; Sat-Sun off.

## Resources

| Resource | Group |
| --- | --- |
| ikk775 | プロジェクトマネージャー・デザイナー・コーダー・レビュワー・ドキュメンター・テスター |
| na4zagin3 | プロジェクトマネージャー・デザイナー・コーダー・レビュワー・ドキュメンター・テスター |

## Schedule

| ID | Task | Type | Duration | Start | Finish | Predecessors | Complete | Baseline start | Baseline finish | Baseline duration | Resources |
| --- | --- | --- | --- | --- | --- | --- | --- | --- | --- | --- | --- |
| 1 | 言語仕様策定 |  | 18d | 2010-10-11 | 2010-11-03 |  | 72% | 2010-10-11 | 2010-11-03 | 18d | ikk775 [50%]; na4zagin3 [50%] |
| 2 | S式リーダモジュールの作成 |  | 18d | 2010-10-11 | 2010-11-03 |  | 90% | 2010-10-11 | 2010-11-03 | 18d | ikk775 [30%] |
| 3 | S式表現の仕様策定 |  | 18d | 2010-10-11 | 2010-11-03 |  | 80% | 2010-10-11 | 2010-11-03 | 18d | na4zagin3 [50%] |
| 4 | S式→中間言語への変換部の作成 |  | 5d | 2010-11-04 | 2010-11-10 | 2, 3 |  | 2010-11-04 | 2010-11-10 | 5d | na4zagin3 |
| 5 | 型推論部の作成 |  | 5d | 2010-11-11 | 2010-11-17 | 4 | 44% | 2010-11-11 | 2010-11-17 | 5d | ikk775 |
| 6 | 正規化部の作成 |  | 9d | 2010-11-04 | 2010-11-16 | 1 |  | 2010-11-04 | 2010-11-16 | 9d | na4zagin3 |
| 7 | 最適化部の作成 |  | 10d | 2010-11-17 | 2010-11-30 | 6 |  | 2010-11-17 | 2010-11-30 | 10d | na4zagin3 |
| 8 | 仮想機械語への変換部の作成 |  | 5d | 2010-11-17 | 2010-11-23 | 6 |  | 2010-11-17 | 2010-11-23 | 5d | na4zagin3 |
| 9 | 仮想機械語最適化部の作成 |  | 5d | 2010-11-24 | 2010-11-30 | 8 |  | 2010-11-24 | 2010-11-30 | 5d | ikk775 |
| 10 | 基本部分完成 | milestone | 0d | 2010-11-24 | 2010-11-24 | 1, 4, 5, 8 |  | 2010-11-24 | 2010-11-24 | 1d |  |
| 11 | 基本仕様のデバッグ |  | 10d | 2010-11-25 | 2010-12-08 | 10 |  | 2010-11-25 | 2010-12-08 | 10d | ikk775; na4zagin3 |
| 12 | 標準ライブラリの作成 |  | 13d | 2010-10-22 | 2010-11-09 | 1SS | 13% | 2010-10-22 | 2010-11-09 | 13d | ikk775; na4zagin3 |
| 13 | FFIの作成 |  | 10d | 2010-11-25 | 2010-12-08 | 10 |  | 2010-11-25 | 2010-12-08 | 10d | ikk775 |
| 14 | 構文木変換部の作成 |  | 5d | 2010-12-09 | 2010-12-15 |  |  | 2010-12-09 | 2010-12-15 | 5d | na4zagin3 |
| 15 | 字句・構文解析部の作成 |  | 5d | 2010-12-09 | 2010-12-15 |  |  | 2010-12-09 | 2010-12-15 | 5d | ikk775 |
| 16 | 目標達成 | milestone | 0d | 2010-12-16 | 2010-12-16 | 10, 11, 12, 13, 14, 15 |  | 2010-12-16 | 2010-12-16 | 1d |  |
| 17 | 全体的なデバッグ |  | 22d | 2010-12-16 | 2011-01-14 | 10, 12, 13, 14, 15 |  | 2010-12-16 | 2011-01-14 | 22d | ikk775; na4zagin3 |
| 18 | GCの作成 |  | 22d | 2010-12-16 | 2011-01-14 |  |  | 2010-12-16 | 2011-01-14 | 22d | ikk775; na4zagin3 |
| 19 | 完成 | milestone | 0d | 2011-01-17 | 2011-01-17 | 17, 18 |  | 2011-01-17 | 2011-01-17 | 1d |  |
